gantt
    title Atlas Market Data Platform — Migration Timeline
    dateFormat  YYYY-MM-DD
    axisFormat  %b %d

    section Phase 0 Design
    Sprint 120 Architecture Design        :done, 2026-07-10, 7d
    DataBento Account Setup               :active, 2026-07-17, 3d
    ADR Review and Approval               :2026-07-17, 5d

    section Phase 1 Infrastructure
    Sprint 121 DBN Parser and Client      :2026-07-22, 5d
    Sprint 121 Event Bus and Symbol Reg   :2026-07-27, 3d
    Sprint 121 Schema Migration           :2026-07-30, 2d
    Sprint 121 Unit Tests                 :2026-08-01, 2d

    section Phase 2 Shadow Mode
    Sprint 122 Bar Builder Tick Storage   :2026-08-03, 5d
    Sprint 122 Parity Monitor             :2026-08-08, 3d
    Sprint 122 Feed Health Dashboard      :2026-08-11, 2d
    Sprint 123 Shadow Mode Certification  :crit, 2026-08-13, 7d

    section Phase 3 Dual Primary
    Sprint 124 Dual Primary Activation    :2026-08-20, 3d
    Sprint 124 Live Chart                 :2026-08-23, 5d
    Sprint 124 Trade Annotations          :2026-08-28, 2d
    Sprint 125 Dual Primary Certification :crit, 2026-08-30, 7d

    section Phase 4 Primary Promotion
    Sprint 126 M16 Watchdog Mode          :2026-09-06, 3d
    Sprint 126 Rollback Test              :crit, 2026-09-09, 1d
    Sprint 126 Primary Certification      :crit, 2026-09-10, 10d

    section Phase 5 Replay Engine
    Sprint 127 Replay Generator           :2026-09-20, 5d
    Sprint 127 Replay Session Manager     :2026-09-25, 3d
    Sprint 127 Cold Tier Export           :2026-09-28, 3d
    Sprint 127 Replay Certification       :crit, 2026-10-01, 3d
